Schedule from GanttProject, 2020-04-03 to 2020-08-25.

## Calendars

- Project calendar: Mon-Fri working; Sat-Sun off.

## Schedule

| ID | WBS | Task | Type | Duration | Start | Finish | Predecessors | Complete |
| --- | --- | --- | --- | --- | --- | --- | --- | --- |
| 1 | 1 | **제품디자인** |  | 10d | 2020-04-03 | 2020-04-16 |  | 100% |
| 2 | 1.1 | 1차 디자인 시안 |  | 3d | 2020-04-03 | 2020-04-07 |  | 100% |
| 3 | 1.2 | 2차 디자인 시안 |  | 7d | 2020-04-08 | 2020-04-16 | 2 | 100% |
| 4 | 1.3 | (산출물) 디자인 확정안 | milestone | 0d | 2020-04-17 | 2020-04-17 | 3 | 100% |
| 5 | 2 | **회로개발** |  | 34d | 2020-04-03 | 2020-05-20 |  | 35% |
| 6 | 2.1 | 아키텍쳐 설계 |  | 5d | 2020-04-03 | 2020-04-09 |  | 100% |
| 7 | 2.2 | 상세설계 |  | 15d | 2020-04-10 | 2020-04-30 | 6 | 50% |
| 8 | 2.3 | (산출물) 회로도면 | milestone | 0d | 2020-05-01 | 2020-05-01 | 7 |  |
| 9 | 2.4 | 부품조달 |  | 14d | 2020-05-01 | 2020-05-20 | 8 |  |
| 10 | 3 | **기구개발** |  | 33d | 2020-04-03 | 2020-05-19 |  | 33% |
| 11 | 3.1 | 대략설계 |  | 4d | 2020-04-03 | 2020-04-08 |  | 100% |
| 12 | 3.2 | 상세설계 |  | 15d | 2020-04-09 | 2020-04-29 | 11 | 50% |
| 13 | 3.3 | (산출물) 기구도면 | milestone | 0d | 2020-04-30 | 2020-04-30 | 12 |  |
| 14 | 3.4 | 부품조달 |  | 14d | 2020-04-30 | 2020-05-19 | 13 |  |
| 15 | 4 | **소프트웨어개발** |  | 55d | 2020-04-03 | 2020-06-18 |  | 26% |
| 16 | 4.1 | 아키텍쳐 설계 |  | 5d | 2020-04-03 | 2020-04-09 |  | 100% |
| 17 | 4.2 | 구현 |  | 20d | 2020-04-10 | 2020-05-07 | 16 | 50% |
| 18 | 4.3 | (산출물) 소스코드 | milestone | 0d | 2020-05-08 | 2020-05-08 | 17 |  |
| 19 | 4.4 | 디버깅 |  | 30d | 2020-05-08 | 2020-06-18 | 18 |  |
| 20 | 5 | **조립 및 테스트** |  | 70d | 2020-05-20 | 2020-08-25 |  |  |
| 21 | 5.1 | 1차 조립 및 테스트 |  | 7d | 2020-05-20 | 2020-05-28 | 14 |  |
| 22 | 5.2 | (산출물) 시제품 | milestone | 0d | 2020-05-29 | 2020-05-29 | 21 |  |
| 23 | 5.3 | 1차 수정보완 |  | 14d | 2020-05-29 | 2020-06-17 | 22 |  |
| 24 | 5.4 | 2차 조립 및 테스트 |  | 15d | 2020-06-18 | 2020-07-08 | 23 |  |
| 25 | 5.5 | 2차 수정보완 |  | 14d | 2020-07-09 | 2020-07-28 | 24 |  |
| 26 | 5.6 | (산출물) 결과보고서 | milestone | 0d | 2020-07-29 | 2020-07-29 | 25 |  |
| 27 | 5.7 | 현장 운용 테스트 |  | 20d | 2020-07-29 | 2020-08-25 | 26 |  |
